# Databrary

How a schedule from ProjectLibre changed from version to version. A marks actual dates.

## Version 1 (saved 2014-11-17)

Note of the change: Relocate planning docs from admin

| ID | WBS | Task | Duration | Start | Finish | Predecessors |
| --- | --- | --- | --- | --- | --- | --- |
| 1 | 1 | **Timeline** | 21d | 2014-11-10 | 2014-12-08 |  |
| 2 |  | Drag-move | 2d | 2014-11-10 | 2014-11-11 |  |
| 3 | 1.2 | **Excerpts** | 6d | 2014-11-12 | 2014-11-19 | 2 |
| 4 |  | Specification | 3d | 2014-11-12 | 2014-11-14 |  |
| 5 |  | Viewing | 3d | 2014-11-17 | 2014-11-19 | 4 |
| 6 |  | Tags | 8d | 2014-11-20 | 2014-12-01 | 3 |
| 7 |  | Comments | 5d | 2014-12-02 | 2014-12-08 | 6 |
| 8 | 2 | **Spreadsheet** | 19d | 2015-01-09 | 2015-02-04 | 15 |
| 9 |  | Keyboard navigation | 2d | 2015-01-09 | 2015-01-12 |  |
| 10 | 2.2 | **Drop-downs** | 7d | 2015-01-13 | 2015-01-21 | 9 |
| 11 |  | Custom values | 2d | 2015-01-13 | 2015-01-14 |  |
| 12 |  | Auto fill-ins | 5d | 2015-01-15 | 2015-01-21 | 11 |
| 13 |  | Asset view | 5d | 2015-01-22 | 2015-01-28 | 10 |
| 14 |  | Record view | 5d | 2015-01-29 | 2015-02-04 | 13 |
| 15 | 3 | **Ingest** | 4d | 2015-01-05 | 2015-01-08 | 17 |
| 16 |  | JSON backend | 4d | 2015-01-05 | 2015-01-08 |  |
| 17 | 4 | **Home page** | 19d | 2014-12-09 | 2015-01-02 | 1 |
| 18 |  | Design | 2d | 2014-12-09 | 2014-12-10 |  |
| 19 |  | Volume activity feed | 5d | 2014-12-11 | 2014-12-17 | 18 |
| 20 | 4.3 | **Tag views** | 12d | 2014-12-18 | 2015-01-02 | 19 |
| 21 |  | List of top tags | 3d | 2014-12-26 | 2014-12-30 | 22 |
| 22 |  | Tagged items | 6d | 2014-12-18 | 2014-12-25 |  |
| 23 |  | Integrate with search | 3d | 2014-12-31 | 2015-01-02 | 21 |
| 24 | 5 | **Study design** | 12d | 2015-02-05 | 2015-02-20 | 8 |
| 25 |  | Column selection | 4d | 2015-02-05 | 2015-02-10 | 14 |
| 26 |  | Column ordering | 2d | 2015-02-11 | 2015-02-12 | 25 |
| 27 |  | Custom metric specifications | 6d | 2015-02-13 | 2015-02-20 | 26 |
| 28 | 6 | **File format support** | 15d | 2015-02-23 | 2015-03-13 | 24 |
| 29 |  | Format detection | 5d | 2015-02-23 | 2015-02-27 |  |
| 30 | 6.2 | **Audio support** | 7d | 2015-03-02 | 2015-03-10 | 29 |
| 31 |  | Standard format | 3d | 2015-03-02 | 2015-03-04 |  |
| 32 |  | Transcoding | 2d | 2015-03-05 | 2015-03-06 | 31 |
| 33 |  | Browser support | 2d | 2015-03-09 | 2015-03-10 | 32 |
| 34 |  | Datavyu positioning | 3d | 2015-03-11 | 2015-03-13 | 30 |
| 35 |  | DOI | 3d | 2015-03-16 | 2015-03-18 | 28 |
| 36 | 8 | **Export** | 7d | 2015-03-19 | 2015-03-27 | 35 |
| 37 |  | Metadata CSV | 3d | 2015-03-19 | 2015-03-23 | 24 |
| 38 |  | Citation | 2d | 2015-03-26 | 2015-03-27 | 39 |
| 39 |  | CSV in ZIP | 2d | 2015-03-24 | 2015-03-25 | 37 |
| 40 | 9 | **Volume view** | 21d | 2015-03-30 | 2015-04-27 | 36 |
| 41 |  | Aggregate/summary data | 8d | 2015-03-30 | 2015-04-08 |  |
| 42 |  | Activity monitoring | 5d | 2015-04-09 | 2015-04-15 | 41 |
| 43 |  | Progress tracking | 5d | 2015-04-16 | 2015-04-22 | 42 |
| 44 |  | Aggregate activity | 3d | 2015-04-23 | 2015-04-27 | 43 |

## Version 2 (saved 2015-01-09)

Note of the change: Merge branch 'master' of https://github.com/databrary/design

Last finish stays 2015-04-27.

Changed:

| ID | Task | Start | Finish | Duration | Total float | Predecessors | Other |
| --- | --- | --- | --- | --- | --- | --- | --- |
| 1 | **Timeline** |  | 2014-12-08 → 2015-01-27 (+50d) | 21d → 48.88d | none → 6412.5d | none → 15 |  |
| 2 | Drag-move |  | 2014-11-11 → 2014-11-27 (+16d) | 2d → 13.88d | none → 6112.5d |  |  |
| 3 | **Excerpts** | 2014-11-12 → 2014-11-17 (+5d) | 2014-11-19 → 2014-12-02 (+13d) | 6d → 11.88d | none → 6412.5d |  | constraint none → start no earlier than 2014-11-25 |
| 4 | Specification | 2014-11-12 → 2014-11-27 (+15d) | 2014-11-14 → 2014-12-02 (+18d) |  | none → 6112.5d |  |  |
| 6 | Tags | 2014-11-20 → 2014-12-02 (+12d) | 2014-12-01 → 2014-12-12 (+11d) |  | none → 6412.5d |  |  |
| 7 | Comments | 2014-12-02 → 2015-01-20 (+49d) | 2014-12-08 → 2015-01-27 (+50d) |  | none → 6412.5d | 6 → 23 |  |
| 8 | **Spreadsheet** | 2015-01-09 → 2015-01-13 (+4d) |  | 19d → 17d |  |  |  |
| 9 | Keyboard navigation | 2015-01-09 → 2015-01-13 (+4d) | 2015-01-12 → 2015-01-14 (+2d) |  | none → -200d |  |  |
| 15 | **Ingest** |  |  |  |  | 17 → none |  |
| 17 | **Home page** | 2014-12-09 → 2014-12-12 (+3d) | 2015-01-02 → 2015-01-20 (+18d) |  | none → 6412.5d | 1 → 6 |  |
| 18 | Design | 2014-12-09 → 2014-12-12 (+3d) | 2014-12-10 → 2014-12-16 (+6d) |  | none → 6412.5d |  |  |
| 19 | Volume activity feed | 2014-12-11 → 2014-12-16 (+5d) | 2014-12-17 → 2014-12-23 (+6d) |  | none → 6412.5d |  |  |
| 20 | **Tag views** | 2014-12-18 → 2014-12-23 (+5d) | 2015-01-02 → 2015-01-20 (+18d) |  | none → 6412.5d |  |  |
| 21 | List of top tags | 2014-12-26 → 2015-01-12 (+17d) | 2014-12-30 → 2015-01-15 (+16d) |  | none → 6412.5d |  |  |
| 22 | Tagged items | 2014-12-18 → 2014-12-23 (+5d) | 2014-12-25 → 2015-01-12 (+18d) |  | none → 6412.5d |  |  |
| 23 | Integrate with search | 2014-12-31 → 2015-01-15 (+15d) | 2015-01-02 → 2015-01-20 (+18d) |  | none → 6412.5d |  |  |
